# Software Development

Schedule from MS Project, 2014-02-17 to 2014-10-14, costs in $, A marks actual dates.

## Calendars

- Standard: Mon-Fri 08:00-12:00, 13:00-17:00; Sat-Sun off.

## Resources

| Resource | Rate |
| --- | --- |
| Management | 75 |
| Project Manager | 85 |
| Analyst | 65 |
| Developer | 62 |
| Testers | 58 |
| Deployment Team | 45 |

## Schedule

| ID | WBS | Task | Type | Duration | Start | Finish | Predecessors | Complete | Remaining | Baseline start | Baseline finish | Baseline duration | Total slack | Resources | Work | Actual work | Cost | Baseline cost | Actual cost |
| --- | --- | --- | --- | --- | --- | --- | --- | --- | --- | --- | --- | --- | --- | --- | --- | --- | --- | --- | --- |
| 1 | 1 | **Inception** |  | 36.25d | 2014-02-17 A | 2014-04-08 |  | 94% | 2d |  |  |  | 134.88d |  | 200h | 184h | 15,420 |  | 14,060 |
| 2 | 1.1 | **Scope** |  | 14.5d | 2014-02-17 A | 2014-03-07 A |  | 100% |  | 2014-02-17 | 2014-03-07 | 14.5d |  |  | 20h | 20h | 1,660 | 1,660 | 1,660 |
| 3 | 1.1.1 | Determine project scope |  | 4h | 2014-02-17 A | 2014-02-17 A |  | 100% |  | 2014-02-17 | 2014-02-17 | 4h |  | Management | 4h | 4h | 300 | 300 | 300 |
| 4 | 1.1.2 | Write Scope Document |  | 12d | 2014-02-17 A | 2014-03-05 A | 3 | 100% |  | 2014-02-17 | 2014-03-05 | 12d |  |  |  |  |  |  |  |
| 5 | 1.1.3 | Define preliminary resources |  | 1d | 2014-03-05 A | 2014-03-06 A | 4 | 100% |  | 2014-03-05 | 2014-03-06 | 1d |  | Project Manager | 8h | 8h | 680 | 680 | 680 |
| 6 | 1.1.4 | Secure core resources |  | 1d | 2014-03-06 A | 2014-03-07 A | 5 | 100% |  | 2014-03-06 | 2014-03-07 | 1d |  | Project Manager | 8h | 8h | 680 | 680 | 680 |
| 7 | 1.1.5 | Scope complete | milestone | 0d | 2014-03-07 A | 2014-03-07 A | 6 | 100% |  | 2014-03-07 | 2014-03-07 | 0d |  |  |  |  |  |  |  |
| 8 | 1.2 | **Software Requirements** |  | 21.75d | 2014-03-07 A | 2014-04-08 |  | 91% | 2d | 2014-03-07 | 2014-04-03 | 19d | 134.88d |  | 180h | 164h | 13,760 | 8,640 | 12,400 |
| 9 | 1.2.1 | Conduct needs analysis |  | 5d | 2014-03-07 A | 2014-03-14 A | 7 | 100% |  | 2014-03-07 | 2014-03-14 | 5d |  | Analyst | 40h | 40h | 2,600 | 2,600 | 2,600 |
| 10 | 1.2.2 | Draft preliminary software specifications |  | 3d | 2014-03-14 A | 2014-03-19 A | 9 | 100% |  | 2014-03-14 | 2014-03-19 | 3d |  | Analyst | 24h | 24h | 1,560 | 1,560 | 1,560 |
| 11 | 1.2.3 | Develop preliminary budget |  | 2d | 2014-03-19 A | 2014-03-21 A | 10 | 100% |  | 2014-03-19 | 2014-03-21 | 2d |  | Project Manager | 16h | 16h | 1,360 | 1,360 | 1,360 |
| 12 | 1.2.4 | Review software specifications/budget with team |  | 4h | 2014-03-21 A | 2014-03-21 A | 11 | 100% |  | 2014-03-21 | 2014-03-21 | 4h |  | Project Manager; Analyst | 8h | 8h | 600 | 600 | 600 |
| 13 | 1.2.5 | Incorporate feedback on software specifications |  | 1d | 2014-03-24 A | 2014-03-24 A | 12 | 100% |  | 2014-03-24 | 2014-03-24 | 1d |  | Analyst | 8h | 8h | 520 | 520 | 520 |
| 14 | 1.2.6 | Develop delivery timeline |  | 1d | 2014-03-25 A | 2014-03-25 A | 13 | 100% |  | 2014-03-25 | 2014-03-25 | 1d |  | Project Manager | 8h | 8h | 680 | 680 | 680 |
| 15 | 1.2.7 | Create Project Plan |  | 8d | 2014-03-26 A | 2014-04-08 | 14 | 75% | 2d | 2014-03-26 | 2014-04-01 | 5d | 134.88d | Project Manager | 64h | 48h | 5,440 |  | 4,080 |
| 16 | 1.2.8 | Obtain approvals to proceed (concept, timeline, budget) |  | 2h | 2014-04-02 A | 2014-04-02 A | 15 | 100% |  | 2014-04-02 | 2014-04-02 | 4h |  | Management; Project Manager | 4h | 4h | 320 | 640 | 320 |
| 17 | 1.2.9 | Secure required resources |  | 1d | 2014-04-02 A | 2014-04-03 A | 16, 15 | 100% |  | 2014-04-02 | 2014-04-03 | 1d |  | Project Manager | 8h | 8h | 680 | 680 | 680 |
| 18 | 1.2.10 | Analysis complete | milestone | 0d | 2014-04-03 A | 2014-04-03 A | 17 | 100% |  | 2014-04-03 | 2014-04-03 | 0d |  |  |  |  |  |  |  |
| 19 | 2 | **Elaboration** |  | 16.5d | 2014-04-03 A | 2014-04-25 |  | 91% | 1.43d | 2014-04-03 | 2014-04-29 | 18.5d | 121.38d |  | 96h | 88h | 6,520 | 10,160 | 6,000 |
| 20 | 2.1 | Review preliminary software specifications |  | 2d | 2014-04-03 A | 2014-04-07 A | 18 | 100% |  | 2014-04-03 | 2014-04-07 | 2d |  | Analyst | 16h | 16h | 1,040 | 1,040 | 1,040 |
| 21 | 2.2 | Develop functional specifications |  | 2d | 2014-04-07 A | 2014-04-09 A | 20 | 100% |  | 2014-04-07 | 2014-04-14 | 5d |  | Analyst | 16h | 16h | 1,040 | 2,600 | 1,040 |
| 22 | 2.3 | Develop prototype based on functional specifications |  | 5d | 2014-04-14 A | 2014-04-21 | 21 | 80% | 1d | 2014-04-14 | 2014-04-25 | 9d | 125.88d | Analyst | 40h | 32h | 2,600 | 4,680 | 2,080 |
| 23 | 2.4 | Review functional specifications |  | 2d | 2014-04-23 A | 2014-04-25 A | 22 | 100% |  | 2014-04-25 | 2014-04-29 | 2d |  | Management | 16h | 16h | 1,200 | 1,200 | 1,200 |
| 24 | 2.5 | Obtain approval to proceed |  | 4h | 2014-04-25 A | 2014-04-25 A | 23 | 100% |  | 2014-04-29 | 2014-04-29 | 4h |  | Management; Project Manager | 8h | 8h | 640 | 640 | 640 |
| 25 | 2.6 | Design complete | milestone | 0d | 2014-04-25 A | 2014-04-25 A | 24 | 100% |  | 2014-04-29 | 2014-04-29 | 0d |  |  |  |  |  |  |  |

| ID | WBS | Task | Type | Duration | Start | Finish | Predecessors | Complete | Remaining | Baseline start | Baseline finish | Baseline duration | Total slack | Free slack | Constraint | Resources | Work | Actual work | Cost | Baseline cost | Actual cost |
| --- | --- | --- | --- | --- | --- | --- | --- | --- | --- | --- | --- | --- | --- | --- | --- | --- | --- | --- | --- | --- | --- |
| 26 | 3 | **Construction** |  | 113.38d | 2014-04-25 A | 2014-10-02 |  | 34% | 75.38d | 2014-04-30 | 2014-06-02 | 23.25d | 8d |  |  |  | 196h | 40.5h | 11,944 | 11,532 | 2,511 |
| 27 | 3.1 | Re-Review functional specifications |  | 1d | 2014-04-25 A | 2014-04-28 A | 25 | 100% |  | 2014-04-30 | 2014-04-30 | 1d |  |  |  | Developer | 8h | 8h | 496 | 496 | 496 |
| 28 | 3.2 | **Develop code for use case** |  | 105.88d | 2014-04-28 A | 2014-09-23 | 27 | 37% | 67.22d |  |  |  | 0d |  |  |  | 136h | 32.5h | 8,432 |  | 2,015 |
| 29 | 3.2.1 | **Develop code for use case 1** |  | 37.88d | 2014-04-28 A | 2014-06-19 |  | 46% | 20.42d |  |  |  | 0d |  |  |  | 52h | 32.5h | 3,224 |  | 2,015 |
| 30 | 3.2.1.1 | Create and Refine Homepage |  | 4h | 2014-04-28 A | 2014-04-29 A |  | 100% |  |  |  |  |  |  |  | Developer | 4h | 4h | 248 |  | 248 |
| 31 | 3.2.1.2 | Create webpages using functionality based on use cases |  | 6.75d | 2014-04-29 A | 2014-05-15 | 30 | 25% | 5.06d |  |  |  | 25.31d |  | finish no earlier than 2014-05-07 | Developer | 8h | 2h | 496 |  | 124 |
| 32 | 3.2.1.3 | create content needed for each page |  | 10.75d | 2014-04-30 A | 2014-05-14 A | 31 | 100% |  |  |  |  |  |  | finish no earlier than 2014-05-14 | Developer | 22h | 22h | 1,364 |  | 1,364 |
| 33 | 3.2.1.4 | Create links/connections to pages |  | 20d | 2014-05-08 A | 2014-06-04 | 32 | 25% | 15d |  |  |  | 9.12d | 8.62d | finish no earlier than 2014-06-04 | Developer | 2h | 0.5h | 124 |  | 31 |
| 34 | 3.2.1.5 | Developer testing (primary debugging) |  | 2d | 2014-06-17 A | 2014-06-19 | 33 | 25% | 1.5d | 2014-05-26 | 2014-06-02 | 5d | 0d |  |  | Developer | 16h | 4h | 992 | 2,480 | 248 |
| 35 | 3.2.2 | **Develop code for use case 2** |  | 68d | 2014-06-19 | 2014-09-23 | 29 |  |  |  |  |  | 0d |  |  |  | 84h |  | 5,208 |  |  |
| 36 | 3.2.2.1 | Create and Refine Homepage |  | 4h | 2014-06-19 | 2014-07-15 |  |  |  |  |  |  | 0d |  |  | Developer | 4h |  | 248 |  |  |
| 37 | 3.2.2.2 | Create webpages using functionality based on use cases |  | 1d | 2014-07-15 | 2014-08-07 | 36 |  |  |  |  |  | 0d |  |  | Developer | 8h |  | 496 |  |  |
| 38 | 3.2.2.3 | create content needed for each page |  | 6d | 2014-08-07 | 2014-09-02 | 37 |  |  |  |  |  | 0d |  |  | Developer | 48h |  | 2,976 |  |  |
| 39 | 3.2.2.4 | Create links/connections to pages |  | 1d | 2014-09-03 | 2014-09-19 | 38 |  |  |  |  |  | 0d |  |  | Developer | 8h |  | 496 |  |  |
| 40 | 3.2.2.5 | Developer testing (primary debugging) |  | 2d | 2014-09-19 | 2014-09-23 | 39 |  |  | 2014-05-26 | 2014-06-02 | 5d | 0d |  |  | Developer | 16h |  | 992 | 2,480 |  |
| 41 | 3.2.3 | Development complete | milestone | 0d | 2014-09-23 | 2014-09-23 | 35, 28 |  |  | 2014-06-02 | 2014-06-02 | 0d | 0d |  |  |  |  |  |  |  |  |
| 42 | 3.3 | **Testing** |  | 6.5d | 2014-09-23 | 2014-10-02 |  |  |  | 2014-06-02 | 2014-06-24 | 16d | 0d |  |  |  | 52h |  | 3,016 | 7,424 |  |
| 43 | 3.3.1 | **Unit Testing** |  | 6.5d | 2014-09-23 | 2014-10-02 |  |  |  | 2014-06-02 | 2014-06-13 | 9.5d | 0d |  |  |  | 52h |  | 3,016 | 4,408 |  |
| 44 | 3.3.1.1 | Review modular code |  | 1.5d | 2014-09-23 | 2014-09-25 | 41 |  |  | 2014-06-02 | 2014-06-03 | 1.5d | 0d |  |  | Testers | 12h |  | 696 | 696 |  |
| 45 | 3.3.1.2 | Test component modules to product specifications |  | 1d | 2014-09-25 | 2014-09-26 | 41, 44 |  |  | 2014-06-03 | 2014-06-05 | 2d | 0d |  |  | Testers | 8h |  | 464 | 928 |  |
| 46 | 3.3.1.3 | Identify anomalies to product specifications |  | 8h | 2014-09-26 | 2014-09-29 | 45 |  |  | 2014-06-05 | 2014-06-06 | 1d | 0d |  |  | Testers | 8h |  | 464 | 464 |  |
| 47 | 3.3.1.4 | Modify code |  | 2d | 2014-09-29 | 2014-10-01 | 46 |  |  | 2014-06-06 | 2014-06-11 | 3d | 0d |  |  | Testers | 16h |  | 928 | 1,392 |  |
| 48 | 3.3.1.5 | Re-test modified code |  | 1d | 2014-10-01 | 2014-10-02 | 47 |  |  | 2014-06-11 | 2014-06-13 | 2d | 0d |  |  | Testers | 8h |  | 464 | 928 |  |
| 49 | 3.3.1.6 | Unit testing complete | milestone | 0d | 2014-10-02 | 2014-10-02 | 48 |  |  | 2014-06-13 | 2014-06-13 | 0d | 8d |  |  |  |  |  |  |  |  |
| 50 | 3.3.2 | Complete Testing | milestone | 0d | 2014-10-02 | 2014-10-02 | 48 |  |  | 2014-06-24 | 2014-06-24 |  | 0d |  |  |  |  |  |  |  |  |

| ID | WBS | Task | Type | Duration | Start | Finish | Predecessors | Baseline start | Baseline finish | Baseline duration | Total slack | Resources | Work | Cost | Baseline cost |
| --- | --- | --- | --- | --- | --- | --- | --- | --- | --- | --- | --- | --- | --- | --- | --- |
| 51 | 4 | **Transition** |  | 8d | 2014-10-02 | 2014-10-14 |  |  |  |  | 0d |  | 64h | 3,840 |  |
| 52 | 4.1 | **Deployment** |  | 5d | 2014-10-02 | 2014-10-09 |  | 2014-06-24 | 2014-07-01 | 5d | 0d |  | 40h | 1,800 | 1,800 |
| 53 | 4.1.1 | Determine final deployment strategy |  | 1d | 2014-10-02 | 2014-10-03 | 50 | 2014-06-24 | 2014-06-25 | 1d | 0d | Deployment Team | 8h | 360 | 360 |
| 54 | 4.1.2 | Develop deployment methodology |  | 1d | 2014-10-03 | 2014-10-06 | 53 | 2014-06-25 | 2014-06-26 | 1d | 0d | Deployment Team | 8h | 360 | 360 |
| 55 | 4.1.3 | Secure deployment resources |  | 1d | 2014-10-06 | 2014-10-07 | 54 | 2014-06-26 | 2014-06-27 | 1d | 0d | Deployment Team | 8h | 360 | 360 |
| 56 | 4.1.4 | Train staff |  | 1d | 2014-10-07 | 2014-10-08 | 55 | 2014-06-27 | 2014-06-30 | 1d | 0d | Deployment Team | 8h | 360 | 360 |
| 57 | 4.1.5 | Deploy software |  | 1d | 2014-10-08 | 2014-10-09 | 56 | 2014-06-30 | 2014-07-01 | 1d | 0d | Deployment Team | 8h | 360 | 360 |
| 58 | 4.1.6 | Deployment complete | milestone | 0d | 2014-10-09 | 2014-10-09 | 57 | 2014-07-01 | 2014-07-01 | 0d | 0d |  |  |  |  |
| 59 | 4.2 | **Post Implementation Review** |  | 3d | 2014-10-09 | 2014-10-14 |  | 2014-07-01 | 2014-07-04 | 3d | 0d |  | 24h | 2,040 | 2,040 |
| 60 | 4.2.1 | Document lessons learned |  | 1d | 2014-10-09 | 2014-10-10 | 58 | 2014-07-01 | 2014-07-02 | 1d | 0d | Project Manager | 8h | 680 | 680 |
| 61 | 4.2.2 | Distribute to team members |  | 1d | 2014-10-10 | 2014-10-13 | 60 | 2014-07-02 | 2014-07-03 | 1d | 0d | Project Manager | 8h | 680 | 680 |
| 62 | 4.2.3 | Create software maintenance team |  | 1d | 2014-10-13 | 2014-10-14 | 61 | 2014-07-03 | 2014-07-04 | 1d | 0d | Project Manager | 8h | 680 | 680 |
| 63 | 4.2.4 | Post implementation review complete | milestone | 0d | 2014-10-14 | 2014-10-14 | 62 | 2014-07-04 | 2014-07-04 | 0d | 0d |  |  |  |  |
